How a schedule from a web Gantt chart changed from version to version. A marks actual dates.

## Version 1 (saved 2024-07-31)

| ID | Task | Duration | Start | Finish | Complete |
| --- | --- | --- | --- | --- | --- |
| 2 | 下料 | 8d | 2024-07-22 | 2024-07-29 | 100% |
| 3 | 热处理（固溶） | 3d | 2024-07-29 | 2024-07-31 | 100% |
| 4 | 校直 | 1d | 2024-07-31 | 2024-07-31 |  |
| 5 | 粗车（3道） | 2d | 2024-08-01 | 2024-08-02 |  |
| 6 | 深冷/时效 | 2d | 2024-08-03 | 2024-08-04 |  |
| 7 | 精车（3道精车） | 3d | 2024-08-05 | 2024-08-07 |  |
| 8 | 磨床（3次） | 3d | 2024-08-08 | 2024-08-10 |  |
| 9 | 镀硬铬 | 2d | 2024-08-10 | 2024-08-11 |  |
| 10 | 去氢处理 | 1d | 2024-08-12 | 2024-08-12 |  |
| 11 | 精磨床 | 2d | 2024-08-13 | 2024-08-14 |  |
| 12 | 激光打标 | 1d | 2024-08-14 | 2024-08-14 |  |
| 13 | 全检 | 1d | 2024-08-14 | 2024-08-14 |  |
| 14 | OTS样件提交 | 1d | 2024-08-14 | 2024-08-14 |  |

## Version 2 (saved 2024-07-31)

Last finish stays 2024-08-14.

Added:

| ID | Task | Duration | Start | Finish |
| --- | --- | --- | --- | --- |
| 7 | 精车（3道） | 3d | 2024-08-05 | 2024-08-07 |
| 8 | 粗磨（3道） | 3d | 2024-08-08 | 2024-08-10 |
| 11 | 精磨 | 2d | 2024-08-13 | 2024-08-14 |

Removed: 7 精车（3道精车）; 8 磨床（3次）; 11 精磨床

## Version 3 (saved 2024-08-01)

Last finish stays 2024-08-14. Complete tasks 2 → 4.

Changed:

| ID | Task | Complete |
| --- | --- | --- |
| 4 | 校直 | 0% → 100% |
| 5 | 粗车（3道） | 0% → 100% |

## Version 4 (saved 2024-08-07)

Last finish stays 2024-08-14. Complete tasks 4 → 3.

Changed:

| ID | Task | Complete |
| --- | --- | --- |
| 5 | 粗车（3道） | 100% → 0% |

## Version 5 (saved 2024-08-08)

Last finish stays 2024-08-14. Complete tasks 3 → 4.

Changed:

| ID | Task | Start | Finish | Duration | Complete |
| --- | --- | --- | --- | --- | --- |
| 5 | 粗车（3道） |  | 2024-08-02 → 2024-08-07 (+5d) | 2d → 7d | 0% → 100% |
| 6 | 深冷/时效 | 2024-08-03 → 2024-08-07 (+4d) | 2024-08-04 → 2024-08-08 (+4d) |  |  |

## Version 6 (saved 2024-08-12)

Last finish stays 2024-08-14. Complete tasks 4 → 6.

Changed:

| ID | Task | Finish | Duration | Complete |
| --- | --- | --- | --- | --- |
| 6 | 深冷/时效 | 2024-08-08 → 2024-08-09 (+1d) | 2d → 3d | 0% → 100% |
| 7 | 精车（3道） |  |  | 0% → 100% |
